# Pelanejamento v1-6

How a schedule from MS Project changed from version to version. A marks actual dates.

## Version 1 (saved 2022-12-09)

Note of the change: Upload das atualizações do planejamento

| ID | WBS | Task | Duration | Start | Finish | Predecessors | Complete | Total float | Constraint |
| --- | --- | --- | --- | --- | --- | --- | --- | --- | --- |
| 1 | 1 | **Sprint 01 - RF - 1.1 a 1.4** | 26d | 2022-11-08 A | 2022-12-13 |  | 79% |  |  |
| 2 |  | Casos de Uso + Modelo Conceitual | 3d | 2022-11-08 A | 2022-11-10 A |  | 100% |  |  |
| 3 |  | SQA | 1d | 2022-11-11 A | 2022-11-11 A | 2 | 100% |  |  |
| 4 |  | Reunião de revisão | 1d | 2022-11-11 A | 2022-11-11 A | 2 | 100% |  |  |
| 5 |  | Diagrama de Classes | 2d | 2022-11-23 A | 2022-11-24 A | 4 | 100% |  | start no earlier than 2022-11-23 |
| 6 |  | SQA | 2d | 2022-11-25 A | 2022-11-28 A | 5 | 100% |  |  |
| 7 |  | Reunião de Revisão | 1d | 2022-11-25 A | 2022-11-25 A | 5 | 100% |  |  |
| 8 |  | Codificação | 5d | 2022-12-01 A | 2022-12-07 A | 7 | 100% |  | start no earlier than 2022-12-01 |
| 9 |  | SQA | 2d | 2022-12-08 | 2022-12-09 | 8 |  | 33d |  |
| 10 |  | Reunião de Revisão | 2d | 2022-12-12 | 2022-12-13 | 9 |  | 33d |  |
| 11 | 2 | **Sprint 02 - RF - 1.5 a 1.8** | 12d | 2022-12-08 A | 2022-12-23 | 8 | 20% | 25d |  |
| 12 |  | Casos de Uso + Modelo Conceitual | 3d | 2022-12-08 A | 2022-12-12 A |  | 100% |  | start no earlier than 2022-12-02 |
| 13 |  | SQA | 2d | 2022-12-13 A | 2022-12-14 | 12 | 10% | 31d |  |
| 14 |  | Reunião de revisão | 1d | 2022-12-15 | 2022-12-15 | 13 |  | 31d |  |
| 15 |  | Diagrama de Classes | 2d | 2022-12-13 | 2022-12-14 | 12 |  | -2d |  |
| 16 |  | SQA | 1d | 2022-12-15 | 2022-12-15 | 15 |  | -2d |  |
| 17 |  | Reunião de Revisão | 1d | 2022-12-16 | 2022-12-16 | 16 |  | 30d |  |
| 18 |  | Codificação | 3d | 2022-12-16 | 2022-12-20 | 16 |  | -2d |  |
| 19 |  | SQA | 2d | 2022-12-21 | 2022-12-22 | 18 |  | 25d |  |
| 20 |  | Reunião de Revisão | 1d | 2022-12-23 | 2022-12-23 | 19 |  | 25d |  |
| 21 | 3 | **Sprint 03 - RF - 1.9 a 1.11** | 14d | 2022-12-21 | 2023-01-09 | 18 |  | -2d |  |
| 22 |  | Casos de Uso + Modelo Conceitual | 3d | 2022-12-21 | 2022-12-23 |  |  | -2d |  |
| 23 |  | SQA | 1d | 2022-12-26 | 2022-12-26 | 22 |  | 24d |  |
| 24 |  | Reunião de revisão | 1d | 2022-12-26 | 2022-12-26 | 22 |  | -2d |  |
| 25 |  | Diagrama de Classes | 2d | 2022-12-27 | 2022-12-28 | 24 |  | -2d |  |
| 26 |  | SQA | 1d | 2022-12-29 | 2022-12-29 | 25 |  | 21d |  |
| 27 |  | Reunião de Revisão | 1d | 2022-12-29 | 2022-12-29 | 25 |  | 14d |  |
| 28 |  | Codificação | 4d | 2022-12-30 | 2023-01-04 | 27 |  | 14d |  |
| 29 |  | SQA | 2d | 2023-01-05 | 2023-01-06 | 28 |  | 14d |  |
| 30 |  | Reunião de Revisão | 1d | 2023-01-09 | 2023-01-09 | 29 |  | 14d |  |
| 31 | 4 | **Sprint 04 - RF 2.1 a 2.4** | 14d | 2022-12-29 | 2023-01-17 | 25 |  | -2d |  |
| 32 |  | Casos de Uso + Modelo Conceitual | 3d | 2022-12-29 | 2023-01-02 |  |  | -2d |  |
| 33 |  | SQA | 2d | 2023-01-03 | 2023-01-04 | 32 |  | 7d |  |
| 34 |  | Reunião de revisão | 1d | 2023-01-03 | 2023-01-03 | 32 |  | -2d |  |
| 35 |  | Diagrama de Classes | 2d | 2023-01-04 | 2023-01-05 | 34 |  | -2d |  |
| 36 |  | SQA | 2d | 2023-01-06 | 2023-01-09 | 35 |  | 4d |  |
| 37 |  | Reunião de Revisão | 1d | 2023-01-06 | 2023-01-06 | 35 |  | -2d |  |
| 38 |  | Codificação | 4d | 2023-01-09 | 2023-01-12 | 37 |  | -2d |  |
| 39 |  | SQA | 2d | 2023-01-13 | 2023-01-16 | 38 |  | -2d |  |
| 40 |  | Reunião de Revisão | 1d | 2023-01-17 | 2023-01-17 | 39 |  | -2d |  |
| 41 | 5 | **Sprint 05 - RF 3.1 a 3.4** | 10d? | 2023-01-13 | 2023-01-26 | 31 |  |  |  |
| 42 |  | Casos de Uso + Modelo Conceitual | 2d | 2023-01-13 | 2023-01-16 |  |  | 1d |  |
| 43 |  | SQA | 1d? | 2023-01-17 | 2023-01-17 | 42 |  | 7d |  |
| 44 |  | Reunião de revisão | 1d? | 2023-01-17 | 2023-01-17 | 42 |  | 1d |  |
| 45 |  | Diagrama de Classes | 1d? | 2023-01-18 | 2023-01-18 | 44 |  | 1d |  |
| 46 |  | SQA | 1d? | 2023-01-19 | 2023-01-19 | 45 |  | 5d |  |
| 47 |  | Reunião de Revisão | 1d? | 2023-01-19 | 2023-01-19 | 45 |  | 1d |  |
| 48 |  | Codificação | 2d | 2023-01-20 | 2023-01-23 | 47 |  | 1d |  |
| 49 |  | SQA | 1d? | 2023-01-24 | 2023-01-24 | 48 |  | 1d |  |
| 50 |  | Reunião de Revisão | 1d? | 2023-01-25 | 2023-01-25 | 49 |  | 1d |  |
| 51 |  | Finalização | 1d | 2023-01-27 | 2023-01-27 | 41 |  | 0d |  |

## Version 2 (saved 2023-01-16)

Note of the change: Novo Documento de Requisitos

Last finish stays 2023-01-27. Complete tasks 8 → 18.

Changed:

| ID | Task | Start | Finish | Duration | Complete | Total float | Predecessors | Other |
| --- | --- | --- | --- | --- | --- | --- | --- | --- |
| 1 | **Sprint 01 - RF - 1.1 a 1.4** |  | 2022-12-13 A |  | 79% → 100% |  |  |  |
| 9 | SQA | 2022-12-08 A | 2022-12-09 A |  | 0% → 100% | 33d → none |  |  |
| 10 | Reunião de Revisão | 2022-12-12 A | 2022-12-13 A |  | 0% → 100% | 33d → none |  |  |
| 11 | **Sprint 02 - RF - 1.5 a 1.8** |  | 2022-12-23 → 2022-12-27 A (+4d) | 12d → 14d | 20% → 100% | 25d → none |  |  |
| 13 | SQA |  | 2022-12-14 A |  | 10% → 100% | 31d → none |  |  |
| 14 | Reunião de revisão | 2022-12-15 A | 2022-12-15 A |  | 0% → 100% | 31d → none |  |  |
| 15 | Diagrama de Classes | 2022-12-13 A | 2022-12-14 A |  | 0% → 100% | -2d → none |  |  |
| 16 | SQA | 2022-12-15 A | 2022-12-15 A |  | 0% → 100% | -2d → none |  |  |
| 17 | Reunião de Revisão | 2022-12-16 A | 2022-12-16 A |  | 0% → 100% | 30d → none |  |  |
| 18 | Codificação | 2022-12-16 A | 2022-12-20 → 2022-12-22 A (+2d) | 3d → 5d | 0% → 100% | -2d → none |  |  |
| 19 | SQA | 2022-12-21 → 2022-12-23 A (+2d) | 2022-12-22 → 2022-12-26 A (+4d) |  | 0% → 100% | 25d → none |  |  |
| 20 | Reunião de Revisão | 2022-12-23 → 2022-12-27 A (+4d) | 2022-12-23 → 2022-12-27 A (+4d) |  | 0% → 100% | 25d → none |  |  |
| 21 | **Sprint 03 - RF - 1.9 a 1.11** | 2022-12-21 → 2022-12-15 A (-6d) | 2023-01-09 → 2023-01-05 (-4d) | 14d → 16d | 0% → 5% | -2d → 16d | 18 → 15, 18 |  |
| 22 | Casos de Uso + Modelo Conceitual | 2022-12-21 → 2022-12-15 A (-6d) | 2022-12-23 → 2022-12-19 (-4d) |  | 0% → 25% | -2d → 2d |  | resources none → Tomiasi |
| 23 | SQA | 2022-12-26 → 2022-12-22 (-4d) | 2022-12-26 → 2022-12-22 (-4d) |  |  | 24d → 26d |  | constraint none → start no earlier than 2022-12-22; resources none → Serezane |
| 24 | Reunião de revisão | 2022-12-26 → 2022-12-20 (-6d) | 2022-12-26 → 2022-12-20 (-6d) |  |  | -2d → 2d |  | resources none → Batalhoti |
| 25 | Diagrama de Classes | 2022-12-27 → 2022-12-23 (-4d) | 2022-12-28 → 2022-12-26 (-2d) |  |  | -2d → 0d |  | constraint none → start no earlier than 2022-12-23; resources none → Becelli |
| 26 | SQA | 2022-12-29 → 2022-12-27 (-2d) | 2022-12-29 → 2022-12-27 (-2d) |  |  | 21d → 23d |  | resources none → Serezane |
| 27 | Reunião de Revisão | 2022-12-29 → 2022-12-27 (-2d) | 2022-12-29 → 2022-12-27 (-2d) |  |  | 14d → 16d |  | resources none → Batalhoti |
| 28 | Codificação | 2022-12-30 → 2022-12-28 (-2d) | 2023-01-04 → 2023-01-02 (-2d) |  |  | 14d → 16d |  | resources none → Nozawa |
| 29 | SQA | 2023-01-05 → 2023-01-03 (-2d) | 2023-01-06 → 2023-01-04 (-2d) |  |  | 14d → 16d |  | resources none → Serezane |
| 30 | Reunião de Revisão | 2023-01-09 → 2023-01-05 (-4d) | 2023-01-09 → 2023-01-05 (-4d) |  |  | 14d → 16d |  | resources none → Batalhoti |
| 31 | **Sprint 04 - RF 2.1 a 2.4** | 2022-12-29 → 2022-12-27 (-2d) | 2023-01-17 → 2023-01-13 (-4d) |  |  | -2d → 0d |  |  |
| 32 | Casos de Uso + Modelo Conceitual | 2022-12-29 → 2022-12-27 (-2d) | 2023-01-02 → 2022-12-29 (-4d) |  |  | -2d → 0d |  |  |
| 33 | SQA | 2023-01-03 → 2022-12-30 (-4d) | 2023-01-04 → 2023-01-02 (-2d) |  |  | 7d → 9d |  |  |
| 34 | Reunião de revisão | 2023-01-03 → 2022-12-30 (-4d) | 2023-01-03 → 2022-12-30 (-4d) |  |  | -2d → 0d |  |  |
| 35 | Diagrama de Classes | 2023-01-04 → 2023-01-02 (-2d) | 2023-01-05 → 2023-01-03 (-2d) |  |  | -2d → 0d |  |  |
| 36 | SQA | 2023-01-06 → 2023-01-04 (-2d) | 2023-01-09 → 2023-01-05 (-4d) |  |  | 4d → 6d |  |  |
| 37 | Reunião de Revisão | 2023-01-06 → 2023-01-04 (-2d) | 2023-01-06 → 2023-01-04 (-2d) |  |  | -2d → 0d |  |  |
| 38 | Codificação | 2023-01-09 → 2023-01-05 (-4d) | 2023-01-12 → 2023-01-10 (-2d) |  |  | -2d → 0d |  |  |
| 39 | SQA | 2023-01-13 → 2023-01-11 (-2d) | 2023-01-16 → 2023-01-12 (-4d) |  |  | -2d → 0d |  |  |
| 40 | Reunião de Revisão | 2023-01-17 → 2023-01-13 (-4d) | 2023-01-17 → 2023-01-13 (-4d) |  |  | -2d → 0d |  |  |
| 41 | **Sprint 05 - RF 3.1 a 3.4** | 2023-01-13 → 2023-01-16 (+3d) |  | 10d? → 9d? |  | none → 0d |  |  |
| 42 | Casos de Uso + Modelo Conceitual | 2023-01-13 → 2023-01-16 (+3d) | 2023-01-16 → 2023-01-17 (+1d) |  |  | 1d → 0d |  |  |
| 43 | SQA | 2023-01-17 → 2023-01-18 (+1d) | 2023-01-17 → 2023-01-18 (+1d) |  |  | 7d → 6d |  |  |
| 44 | Reunião de revisão | 2023-01-17 → 2023-01-18 (+1d) | 2023-01-17 → 2023-01-18 (+1d) |  |  | 1d → 0d |  |  |
| 45 | Diagrama de Classes | 2023-01-18 → 2023-01-19 (+1d) | 2023-01-18 → 2023-01-19 (+1d) |  |  | 1d → 0d |  |  |
| 46 | SQA | 2023-01-19 → 2023-01-20 (+1d) | 2023-01-19 → 2023-01-20 (+1d) |  |  | 5d → 4d |  |  |
| 47 | Reunião de Revisão | 2023-01-19 → 2023-01-20 (+1d) | 2023-01-19 → 2023-01-20 (+1d) |  |  | 1d → 0d |  |  |
| 48 | Codificação | 2023-01-20 → 2023-01-23 (+3d) | 2023-01-23 → 2023-01-24 (+1d) |  |  | 1d → 0d |  |  |
| 49 | SQA | 2023-01-24 → 2023-01-25 (+1d) | 2023-01-24 → 2023-01-25 (+1d) |  |  | 1d → 0d |  |  |
| 50 | Reunião de Revisão | 2023-01-25 → 2023-01-26 (+1d) | 2023-01-25 → 2023-01-26 (+1d) |  |  | 1d → 0d |  |  |
